# wbs-barbooking

Schedule from MS Project, 2023-01-24 to 2023-05-09, costs in €.

## Calendars

- Standard: Mon-Fri 09:00-13:00, 14:00-18:00; Sat-Sun off.

## Resources

| Resource | Rate |
| --- | --- |
| Mirko Cerati | 16 |
| Gioia Bertin | 50 |
| Gabriela Badarau | 25 |
| Lorenzo Marcato | 16 |
| Lo |  |

## Schedule

| ID | WBS | Task | Duration | Start | Finish | Predecessors | Total slack | Free slack | Resources | Work | Cost |
| --- | --- | --- | --- | --- | --- | --- | --- | --- | --- | --- | --- |
| 1 | 1 | **Bar Booking** | 75.25d | 2023-01-24 | 2023-05-09 |  | 0d |  |  | 1388h | 36,304 |
| 2 | 1.1 | **AVVIO** | 5d | 2023-01-24 | 2023-01-30 |  | 0d |  |  | 120h | 3,568 |
| 3 | 1.1.1 | **Documenti iniziali di progetto** | 5d | 2023-01-24 | 2023-01-30 |  | 0d |  |  | 120h | 3,568 |
| 4 | 1.1.1.1 | Studio fattibilità | 2d | 2023-01-24 | 2023-01-25 |  | 0d |  | Gioia Bertin; Gabriela Badarau; Lorenzo Marcato; Mirko Cerati | 64h | 1,712 |
| 5 | 1.1.1.2 | Analisi contesto | 2d | 2023-01-26 | 2023-01-27 | 4 | 1d |  | Mirko Cerati | 16h | 256 |
| 6 | 1.1.1.3 | Analisi dei rischi | 2d | 2023-01-26 | 2023-01-27 | 4 | 1d |  | Gabriela Badarau | 16h | 400 |
| 7 | 1.1.1.4 | Project Charter | 3d | 2023-01-26 | 2023-01-30 | 4 | 0d |  | Gioia Bertin | 24h | 1,200 |
| 8 | 1.2 | **PIANIFICAZIONE** | 14d | 2023-01-31 | 2023-02-17 | 2 | 0d |  |  | 208h | 6,784 |
| 9 | 1.2.1 | **Documenti iniziali di progetto** | 14d | 2023-01-31 | 2023-02-17 | 3 | 0d |  |  | 160h | 5,200 |
| 10 | 1.2.1.1 | WBS - WP | 2d | 2023-01-31 | 2023-02-01 | 7 | 2d |  | Gioia Bertin | 16h | 800 |
| 11 | 1.2.1.2 | GANTT | 4d | 2023-01-31 | 2023-02-03 | 6 | 0d |  | Gabriela Badarau | 32h | 800 |
| 12 | 1.2.1.3 | RAM | 4d | 2023-02-06 | 2023-02-09 | 10, 11 | 0d |  | Gabriela Badarau; Gioia Bertin | 64h | 2,400 |
| 13 | 1.2.1.4 | Stime di costo (BCWS) | 6d | 2023-02-10 | 2023-02-17 | 12 | 0d |  | Gabriela Badarau | 48h | 1,200 |
| 14 | 1.2.2 | Anilisi statistica tramite sondaggio | 3d | 2023-02-10 | 2023-02-14 | 12 | 3d | 0d | Gioia Bertin; Lorenzo Marcato | 48h | 1,584 |
| 15 | 1.3 | **REALIZZAZIONE** | 48.25d | 2023-02-15 | 2023-04-24 |  | 0d |  |  | 740h | 17,736 |
| 16 | 1.3.1 | Documenti di sviluppo prodotto | 4d | 2023-02-20 | 2023-02-23 | 13, 14, 5 | 0d |  | Gabriela Badarau; Gioia Bertin; Mirko Cerati | 96h | 2,912 |
| 17 | 1.3.2 | requisiti!! | 4d | 2023-02-24 | 2023-03-01 | 16 | 37.25d |  | Gabriela Badarau; Gioia Bertin | 64h | 2,400 |
| 18 | 1.3.3 | **Sviluppo prodotto** | 48.25d | 2023-02-15 | 2023-04-24 |  | 0d |  |  | 580h | 12,424 |
| 19 | 1.3.3.1 | **Creazione del sito web** | 20.25d | 2023-02-15 | 2023-03-15 |  | 0d |  |  | 236h | 5,408 |
| 20 | 1.3.3.1.1 | **Configurazione del dominio** | 8.25d | 2023-02-15 | 2023-02-27 |  | 0d |  |  | 28h | 720 |
| 21 | 1.3.3.1.1.1 | Registrazione | 8h | 2023-02-24 | 2023-02-24 | 16 | 0d |  | Mirko Cerati | 8h | 128 |
| 22 | 1.3.3.1.1.2 | Impostazione DNS | 8h | 2023-02-15 | 2023-02-15 | 14 | 7d |  | Lorenzo Marcato; Gioia Bertin | 16h | 528 |
| 23 | 1.3.3.1.1.3 | Controllo connession SSL | 2h | 2023-02-27 | 2023-02-27 | 21, 22 | 0d |  | Lorenzo Marcato; Mirko Cerati | 4h | 64 |
| 24 | 1.3.3.1.2 | **Organizzazione spazio web** | 12d | 2023-02-27 | 2023-03-15 | 20 | 0d |  |  | 208h | 4,688 |
| 25 | 1.3.3.1.2.1 | Configurazione tema | 10d | 2023-02-27 | 2023-03-13 | 23, 20 | 0d |  | Mirko Cerati | 80h | 1,280 |
| 26 | 1.3.3.1.2.2 | Creazione logo | 4d | 2023-02-27 | 2023-03-03 | 20 | 3d | 0d | Lorenzo Marcato | 32h | 512 |

| ID | WBS | Task | Duration | Start | Finish | Predecessors | Total slack | Free slack | Resources | Work | Cost |
| --- | --- | --- | --- | --- | --- | --- | --- | --- | --- | --- | --- |
| 27 | 1.3.3.1.2.3 | **Inserimento dei contenuti** | 8d | 2023-03-03 | 2023-03-15 |  | 0d |  |  | 80h | 2,640 |
| 28 | 1.3.3.1.2.3.1 | Home Page | 3d | 2023-03-03 | 2023-03-08 | 22, 26 | 3d | 0d | Lorenzo Marcato; Gioia Bertin | 48h | 1,584 |
| 29 | 1.3.3.1.2.3.2 | Prodotti | 2d | 2023-03-08 | 2023-03-10 | 28 | 3d |  | Gioia Bertin | 16h | 800 |
| 30 | 1.3.3.1.2.3.3 | Info (cookie, privacy etc..) | 2d | 2023-03-13 | 2023-03-15 | 25 | 0d |  | Mirko Cerati | 16h | 256 |
| 31 | 1.3.3.1.2.4 | Configurazione metodi di pagamento | 2d | 2023-03-08 | 2023-03-10 | 28 | 3d |  | Lorenzo Marcato | 16h | 256 |
| 32 | 1.3.3.2 | **INTEGRAZIONE CON DATABASE** | 17d | 2023-03-15 | 2023-04-07 | 19 | 0d |  |  | 136h | 3,400 |
| 33 | 1.3.3.2.1 | **Progettazione del database** | 6d | 2023-03-15 | 2023-03-23 |  | 0d |  |  | 48h | 1,200 |
| 34 | 1.3.3.2.1.1 | schema concettuale | 4d | 2023-03-15 | 2023-03-21 | 16 | 0d |  | Gabriela Badarau | 32h | 800 |
| 35 | 1.3.3.2.1.2 | schema logico | 2d | 2023-03-21 | 2023-03-23 | 34 | 0d |  | Gabriela Badarau | 16h | 400 |
| 36 | 1.3.3.2.2 | **creazione e implementazione database** | 11d | 2023-03-23 | 2023-04-07 |  | 0d |  |  | 88h | 2,200 |
| 37 | 1.3.3.2.2.1 | gestione materie prime | 4d | 2023-03-23 | 2023-03-29 | 35 | 0d |  | Gabriela Badarau | 32h | 800 |
| 38 | 1.3.3.2.2.2 | gestione prodotti finiti | 4d | 2023-03-29 | 2023-04-04 | 37 | 0d |  | Gabriela Badarau | 32h | 800 |
| 39 | 1.3.3.2.2.3 | contatti fornitori | 3d | 2023-04-04 | 2023-04-07 | 38 | 0d |  | Gabriela Badarau | 24h | 600 |
| 40 | 1.3.3.3 | **INTEGRAZIONE CASSA** | 11d | 2023-04-07 | 2023-04-24 | 32 | 0d |  |  | 208h | 3,616 |
| 41 | 1.3.3.3.1 | creazione profilo amministratore-cassiere | 3d | 2023-04-07 | 2023-04-12 | 30 | 0d |  | Mirko Cerati | 24h | 384 |
| 42 | 1.3.3.3.2 | implementazione metodi pagamento | 3d | 2023-04-07 | 2023-04-12 | 31 | 0d |  | Lorenzo Marcato | 24h | 384 |
| 43 | 1.3.3.3.3 | **INTEGRAZIONE DI ANALISI E STATISTICA** | 4d | 2023-04-07 | 2023-04-13 | 32 | 7d |  |  | 32h | 800 |
| 44 | 1.3.3.3.3.1 | adozione programmi per report periodici | 4d | 2023-04-07 | 2023-04-13 |  | 7d |  | Gabriela Badarau | 32h | 800 |
| 45 | 1.3.3.3.4 | **RIORGANIZZAZIONE RISORSE UMANE** | 8d | 2023-04-12 | 2023-04-24 |  | 0d |  |  | 128h | 2,048 |
| 46 | 1.3.3.3.4.1 | code separate | 8d | 2023-04-12 | 2023-04-24 | 42 | 0d |  | Lorenzo Marcato | 64h | 1,024 |
| 47 | 1.3.3.3.4.2 | consegna in classe | 8d | 2023-04-12 | 2023-04-24 | 41 | 0d |  | Mirko Cerati | 64h | 1,024 |
| 48 | 1.4 | **COLLAUDO - CHIUSURA** | 11d | 2023-04-24 | 2023-05-09 | 15 | 0d |  |  | 320h | 8,216 |
| 49 | 1.4.1 | Verbali riunioni | 4d | 2023-04-24 | 2023-04-28 | 44 | 2d |  | Gabriela Badarau | 32h | 800 |
| 50 | 1.4.2 | Documenti di revisione | 4d | 2023-04-24 | 2023-04-28 |  | 2d |  | Gioia Bertin | 32h | 1,600 |
| 51 | 1.4.3 | Testing | 6d | 2023-04-24 | 2023-05-02 | 46, 47 | 0d |  | Lorenzo Marcato; Mirko Cerati | 96h | 1,536 |
| 52 | 1.4.4 | Chiusura | 2d | 2023-05-02 | 2023-05-04 | 50, 49, 51 | 0d |  | Gabriela Badarau; Gioia Bertin; Lorenzo Marcato; Mirko Cerati | 64h | 1,712 |
| 53 | 1.4.5 | Presentazione e consegna del prodotto finale | 3d | 2023-05-04 | 2023-05-09 | 52 | 0d |  | Gabriela Badarau; Gioia Bertin; Lorenzo Marcato; Mirko Cerati | 96h | 2,568 |
